# AwakeDrive (깨어있는 드라이브) 일정

How a schedule from GanttProject changed from version to version. A marks actual dates.

## Version 1 (saved 2026-11-03)

Note of the change: Merge remote-tracking branch 'origin/main' into feat/voice-check

| ID | WBS | Task | Duration | Start | Finish | Predecessors | Complete |
| --- | --- | --- | --- | --- | --- | --- | --- |
| 1 | 1 | **0. 준비 (환경·설명회·SRS·인터페이스)** | 12d | 2026-10-26 | 2026-11-06 |  | 50% |
| 2 |  | 개발환경 세팅·GitHub 저장소 | 2d | 2026-10-26 | 2026-10-27 |  | 100% |
| 3 |  | 설명회 참석·질문 | 1d | 2026-10-28 | 2026-10-28 |  | 100% |
| 4 |  | SRS·TC v0.1 작성 | 1d | 2026-10-29 | 2026-10-29 | 3 | 100% |
| 5 |  | SRS v0.2 검토·수정 | 3d | 2026-10-30 | 2026-11-01 | 4 | 100% |
| 6 |  | Pleos 메일 문의 발송 | 1d | 2026-10-30 | 2026-10-30 | 3FS+1d | 100% |
| 7 |  | 에뮬레이터 신호·API 동작 확인 | 4d | 2026-10-29 | 2026-11-01 | 3 |  |
| 8 |  | 데모 시나리오 형식 확정 (MSG-11) | 3d | 2026-10-30 | 2026-11-01 | 4 |  |
| 9 |  | 인터페이스 data class 커밋 (MSG-01~15) | 1d | 2026-11-02 | 2026-11-02 | 5, 7, 8 |  |
| 10 |  | 메일 답변 수신 (목표일) | 0d | 2026-11-07 | 2026-11-07 | 6FS+7d |  |
| 11 | 2 | **1. 1차 MVP 구현 (11/3~11/10 동결)** | 7d | 2026-11-03 | 2026-11-09 |  |  |
| 12 |  | [1번] 신호 허브·단위 변환 (SIG) | 3d | 2026-11-03 | 2026-11-05 | 9 |  |
| 13 |  | [1번] 운행 규칙 TripRules (정차·연속 운전·24시간 누적·운행 시작) | 2d | 2026-11-06 | 2026-11-07 | 12 |  |
| 14 |  | [1번] 상태 저장·복원·부팅·감시 포그라운드 서비스 | 1d | 2026-11-08 | 2026-11-08 | 10, 13 |  |
| 15 |  | [2번] 게이트·조향 지표 3개 (FAT_001~011) | 2d | 2026-11-03 | 2026-11-04 | 9 |  |
| 16 |  | [2번] 위험 점수·맥락 가중·3분 지수평균 (FAT_012~020) | 1d | 2026-11-05 | 2026-11-05 | 15 |  |
| 17 |  | [2번] 기준선·출발 피로 (BSL_003~007) | 1d | 2026-11-06 | 2026-11-06 | 16 |  |
| 18 |  | [2번] 패턴 분류·안전 우회 (PAT) | 1d | 2026-11-07 | 2026-11-07 | 17 |  |
| 19 |  | [2번] 보조 주행 판정 (AST) | 1d | 2026-11-08 | 2026-11-08 | 18 |  |
| 20 |  | [3번] TTS·STT ON_DEVICE·의도 표·대체 동작 (VOI) | 2d | 2026-11-03 | 2026-11-04 | 7, 9 |  |
| 21 |  | [3번] 음성·동승자 확인, 대답 시간 판정 (CHK) | 2d | 2026-11-05 | 2026-11-06 | 20 |  |
| 22 |  | [3번] 단계 전환 상태 머신 (INT) | 2d | 2026-11-07 | 2026-11-08 | 16, 21 |  |
| 23 |  | [4번] 예보 엔진 (FCS) | 2d | 2026-11-03 | 2026-11-04 | 9 |  |
| 24 |  | [4번] 쉼터 데이터 내장 (졸음쉼터 + 휴게소 시도) | 1d | 2026-11-05 | 2026-11-05 | 23 |  |
| 25 |  | [4번] 쉼터 선택·경유지 (RST_002~006) | 1d | 2026-11-06 | 2026-11-06 | 12, 24 |  |
| 26 |  | [4번] 운전석 통풍 (CLM) | 1d | 2026-11-07 | 2026-11-07 | 10, 25 |  |
| 27 |  | [4번] 휴식 인증·파워냅·보상 (RES·RWD) | 1d | 2026-11-08 | 2026-11-08 | 13, 26 |  |
| 28 |  | [5번] 화면 시안 3장 (주행·단계 알림·휴식) | 2d | 2026-11-03 | 2026-11-04 | 9 |  |
| 29 |  | 화면 시안 완료 | 0d | 2026-11-05 | 2026-11-05 | 28 |  |
| 30 |  | [5번] 데모 시나리오 6종 합성 (src/tools-py) | 2d | 2026-11-05 | 2026-11-06 | 8, 28 |  |
| 31 |  | [5번] DemoPlayer (구간 배속·질문 중 1배속·시동 끔) | 2d | 2026-11-07 | 2026-11-08 | 12, 30 |  |
| 32 |  | [5번] Compose 화면 구현 (UI·신호 그래프·첫 실행 설정) | 4d | 2026-11-05 | 2026-11-08 | 29 |  |
| 33 |  | 1차 통합 (main 병합)·E2E 리허설 | 1d | 2026-11-09 | 2026-11-09 | 14, 19, 22, 27, 31, 32 |  |
| 34 |  | MVP 동결 | 0d | 2026-11-10 | 2026-11-10 | 33 |  |
| 35 | 3 | **2. 1차 접수 준비 (11/10~11/15)** | 5d | 2026-11-10 | 2026-11-14 |  |  |
| 36 |  | 버그 수정·TC 실행 결과 기록 | 3d | 2026-11-10 | 2026-11-12 | 34 |  |
| 37 |  | [5번] 시연 영상 촬영 (2분 30초, OBS) | 2d | 2026-11-11 | 2026-11-12 | 34FS+1d |  |
| 38 |  | [5번] 영상 편집·숏폼 | 1d | 2026-11-13 | 2026-11-13 | 37 |  |
| 39 |  | [1번] README·릴리스 APK | 1d | 2026-11-13 | 2026-11-13 | 36 |  |
| 40 |  | [4번] 접수 양식 최종본 | 3d | 2026-11-11 | 2026-11-13 | 34FS+1d |  |
| 41 |  | 1차 제출 | 0d | 2026-11-14 | 2026-11-14 | 38, 39, 40 |  |
| 42 |  | 접수 마감 (11/15 23:59) | 0d | 2026-11-15 | 2026-11-15 | 41FS+1d |  |
| 43 | 4 | **3. 2차 개선·PT (11/16~12/4)** | 19d | 2026-11-16 | 2026-12-04 |  |  |
| 44 |  | 1차 결과 발표 | 0d | 2026-11-23 | 2026-11-23 | 41FS+9d |  |
| 45 |  | [2번] 평소의 나 기준선 (BSL_001·002) | 5d | 2026-11-16 | 2026-11-20 | 41FS+2d |  |
| 46 |  | [2번] 조향 모양 보조 주행 추정 (AST_002) | 4d | 2026-11-21 | 2026-11-24 | 45 |  |
| 47 |  | [4번] 개인 졸음 시점·개인 예보 (FCS_002) | 4d | 2026-11-16 | 2026-11-19 | 41FS+2d |  |
| 48 |  | [4번] 휴게소 데이터 (1차에서 못 했으면) | 4d | 2026-11-20 | 2026-11-23 | 47 |  |
| 49 |  | [3번] 대화 감지 개선·의도 표 확장 | 7d | 2026-11-16 | 2026-11-22 | 41FS+2d |  |
| 50 |  | [5번] 주행 리포트 화면 (UI_011·PRD_012) | 9d | 2026-11-16 | 2026-11-24 | 41FS+2d |  |
| 51 |  | [1번] 열린 기능 반영 (메일·설명회 결과, 확장 가정) | 12d | 2026-11-16 | 2026-11-27 | 10, 41FS+2d |  |
| 52 |  | 2차 통합·TC 재시험 | 3d | 2026-11-28 | 2026-11-30 | 46, 48, 49, 50, 51 |  |
| 53 |  | [4번] PT 자료 작성 | 7d | 2026-11-24 | 2026-11-30 | 44FS+1d, 48 |  |
| 54 |  | PT 리허설 | 2d | 2026-12-01 | 2026-12-02 | 52, 53 |  |
| 55 |  | 2차 PT | 2d | 2026-12-03 | 2026-12-04 | 54 |  |

## Version 2 (saved 2026-11-09)

Note of the change: Merge branch 'main' into feat/ui-awakedrive

Last finish stays 2026-12-04. Complete tasks 5 → 19.

Changed:

| ID | Task | Start | Finish | Complete | Other |
| --- | --- | --- | --- | --- | --- |
| 1 | **0. 준비 (환경·설명회·SRS·인터페이스)** |  |  | 50% → 90% |  |
| 7 | 에뮬레이터 신호·API 동작 확인 |  |  | 0% → 70% |  |
| 8 | 데모 시나리오 형식 확정 (MSG-11) |  |  | 0% → 80% | resources 2번 졸음 판단 엔진 [50%]; 5번 화면·데모·시연 → 2번 졸음 판단 엔진 [50%]; 5번 화면·데모·시연; 1번 차량 신호·운행 상태 [50%] |
| 9 | 인터페이스 data class 커밋 (MSG-01~15) |  |  | 0% → 100% |  |
| 10 | 메일 답변 수신 (목표일) | 2026-11-07 → 2026-11-05 (-2d) | 2026-11-07 → 2026-11-05 (-2d) | 0% → 100% |  |
| 11 | **1. 1차 MVP 구현 (11/3~11/10 동결)** |  |  | 0% → 80% |  |
| 12 | [1번] 신호 허브·단위 변환 (SIG) |  |  | 0% → 90% |  |
| 13 | [1번] 운행 규칙 TripRules (정차·연속 운전·24시간 누적·운행 시작) |  |  | 0% → 100% |  |
| 14 | [1번] 상태 저장·복원·부팅·감시 포그라운드 서비스 |  |  | 0% → 80% |  |
| 15 | [2번] 게이트·조향 지표 3개 (FAT_001~011) |  |  | 0% → 100% |  |
| 16 | [2번] 위험 점수·맥락 가중·3분 지수평균 (FAT_012~020) |  |  | 0% → 100% |  |
| 17 | [2번] 기준선·출발 피로 (BSL_003~007) |  |  | 0% → 100% |  |
| 18 | [2번] 패턴 분류·안전 우회 (PAT) |  |  | 0% → 100% |  |
| 19 | [2번] 보조 주행 판정 (AST) |  |  | 0% → 100% |  |
| 20 | [3번] TTS·STT ON_DEVICE·의도 표·대체 동작 (VOI) |  |  | 0% → 90% |  |
| 21 | [3번] 음성·동승자 확인, 대답 시간 판정 (CHK) |  |  | 0% → 80% |  |
| 22 | [1번] 단계 전환 상태 머신 (INT) |  |  | 0% → 100% | was named [3번] 단계 전환 상태 머신 (INT); resources 3번 개입·음성 확인 → 1번 차량 신호·운행 상태 |
| 23 | [4번] 예보 엔진 (FCS) |  |  | 0% → 100% |  |
| 24 | [4번] 쉼터 데이터 내장 (졸음쉼터 + 휴게소 시도) |  |  | 0% → 100% |  |
| 25 | [4번] 쉼터 선택·경유지 (RST_002~006) |  |  | 0% → 100% |  |
| 26 | [4번] 운전석 통풍 (CLM) |  |  | 0% → 100% |  |
| 27 | [4번] 휴식 인증·파워냅·보상 (RES·RWD) |  |  | 0% → 100% |  |
| 28 | [5번] 화면 시안 3장 (주행·단계 알림·휴식) |  |  | 0% → 50% |  |
| 30 | [5번] 데모 시나리오 6종 합성 (src/tools-py) |  |  | 0% → 80% |  |
| 31 | [1번] DemoPlayer (구간 배속·질문 중 1배속·시동 끔) |  |  | 0% → 80% | was named [5번] DemoPlayer (구간 배속·질문 중 1배속·시동 끔); resources 5번 화면·데모·시연 [50%] → 1번 차량 신호·운행 상태 |
| 32 | [5번] Compose 화면 구현 (UI·신호 그래프·첫 실행 설정) |  |  | 0% → 70% |  |
| 33 | 1차 통합 (main 병합)·E2E 리허설 |  |  | 0% → 20% |  |
